# 13XS487-Technical

Schedule from MS Project, 2013-07-19 to 2014-12-11, status date 2014-08-15, A marks actual dates.
0

## Calendars

- Standard: Mon-Fri 08:00-12:00, 13:00-17:00; Sat-Sun off.

## Resources

| Resource |
| --- |
| Lantern Three Project Manager |
| Lantern Three Software Architect |
| NCI Documentation |
| NCI Project Officer |
| NCI Quality Assurance |
| NCI Systems |
| SAIC-F Technical Project Manager |
| Stephen Langella |
| Scott Oster |
| Shannon Hastings |
| ???? |
| All Architects |
| Prasad |
| Zhengwu |
| Zhengwu Lu |
| Prasad Konka |
| Zhengwu/Prasad |
| Security Team |
| Steve Langella |
| QA/System Team |
| QA |
| System Team |
| Ian Fore |
| GS/GPM/TPM/GQR/QA |
| TideCube |
| NEW |

## Schedule

| ID | WBS | Task | Type | Duration | Start | Finish | Predecessors | Complete | Remaining | Baseline start | Baseline finish | Baseline duration | Total slack | Constraint | Resources | Work | Actual work |
| --- | --- | --- | --- | --- | --- | --- | --- | --- | --- | --- | --- | --- | --- | --- | --- | --- | --- |
| 1 | 1 | Start | milestone | 0h | 2013-10-18 A | 2013-10-18 A |  | 100% |  | 2013-10-18 | 2013-10-18 | 0h |  | start no earlier than 2013-10-18 |  |  |  |
| 2 | 2 | **caGrid Architectural Support** |  | 254d | 2013-10-18 A | 2014-10-08 | 1 | 84% | 41.27d | 2013-10-18 | 2014-10-01 | 249d | 46d |  |  | 1920h | 1608h |
| 3 | 2.1 | caGrid Operations & Maintenance |  | 240d | 2013-10-18 A | 2014-10-08 | 1 | 84% | 39d | 2013-10-18 | 2014-10-01 | 240d | 46d |  | TideCube | 1920h | 1608h |
| 4 | 3 | **caGrid Project Management** |  | 262d | 2013-10-18 A | 2014-10-20 |  | 79% | 55.75d | 2013-10-18 | 2014-10-13 | 257d | 38d |  |  | 4144h | 3216h |
| 5 | 3.1 | caGrid Project Management |  | 248d | 2013-10-18 A | 2014-10-20 |  | 81% | 47d | 2013-10-18 | 2014-10-13 | 248d | 0d | must start on 2013-10-18 |  |  |  |
| 6 | 3.2 | Weekly Status Meeting |  | 248d | 2013-10-18 A | 2014-10-20 |  | 81% | 47d | 2013-10-18 | 2014-10-13 | 248d | 38d | finish no earlier than 2014-09-30 | Zhengwu Lu | 1984h | 1608h |
| 7 | 3.3 | Monthly Status reports |  | 248d | 2013-10-18 A | 2014-10-20 |  | 81% | 47d | 2013-10-18 | 2014-10-13 | 248d | 38d | start no earlier than 2013-10-18 | Prasad Konka | 1984h | 1608h |
| 8 | 3.4 | Project Summary Report |  | 22d | 2014-09-01 | 2014-09-30 |  |  |  | 2014-09-01 | 2014-09-30 | 22d | 52d | finish no earlier than 2014-09-30 | Zhengwu/Prasad | 176h |  |
| 9 | 4 | **caGrid 2.0** |  | 288d | 2013-07-19 A | 2014-08-26 |  | 98% | 6.31d | 2013-07-19 | 2014-08-26 | 288d | 77d |  |  | 3020h | 1843.2h |
| 10 | 4.1 | Start | milestone | 0h | 2013-10-18 A | 2013-10-18 A | 1 | 100% |  | 2013-10-18 | 2013-10-18 | 0h |  |  |  |  |  |
| 11 | 4.2 | **Documentation** |  | 158d | 2013-07-19 A | 2014-02-25 |  | 99% | 0d | 2013-07-19 | 2014-02-25 | 158d | 0d |  | TideCube | 1512h | 752h |
| 12 | 4.2.1 | Obtaining a SHA2 credential |  | 62d | 2013-07-22 A | 2013-10-15 A |  | 100% |  | 2013-07-22 | 2013-10-15 | 62d |  | finish no earlier than 2013-10-15 |  |  |  |
| 13 | 4.2.2 | Patching a caGrid 1.4 Distributions |  | 62d | 2013-07-22 A | 2013-10-15 A |  | 100% |  | 2013-07-22 | 2013-10-15 | 62d |  | finish no earlier than 2013-10-15 |  |  |  |
| 14 | 4.2.3 | Patching caGrid 1.x Services to Support SHA2 |  | 63d | 2013-07-19 A | 2013-10-15 A |  | 100% |  | 2013-07-19 | 2013-10-15 | 63d |  | finish no earlier than 2013-10-15 |  |  |  |
| 15 | 4.2.4 | Create a Trust Fabirc CA |  | 62d | 2013-07-22 A | 2013-10-15 A |  | 100% |  | 2013-07-22 | 2013-10-15 | 62d |  | finish no earlier than 2013-10-15 |  |  |  |
| 16 | 4.2.5 | **Administrator Guides** |  | 26d | 2014-01-21 A | 2014-02-25 A |  | 100% |  | 2014-01-21 | 2014-02-25 | 26d |  |  |  | 248h | 248h |
| 17 | 4.2.5.1 | Dorian |  | 5d | 2014-01-21 A | 2014-01-27 A |  | 100% |  | 2014-01-21 | 2014-01-27 | 5d |  | finish no earlier than 2014-01-27 | Stephen Langella | 40h | 40h |
| 18 | 4.2.5.2 | Grid Trust Service (GTS) |  | 5d | 2014-01-28 A | 2014-02-03 A | 17 | 100% |  | 2014-01-28 | 2014-02-03 | 5d |  | finish no earlier than 2014-02-03 | Stephen Langella | 40h | 40h |
| 19 | 4.2.5.3 | Global Model Exchange (GME) |  | 5d | 2014-01-28 A | 2014-02-03 A |  | 100% |  | 2014-01-28 | 2014-02-03 | 5d |  | finish no earlier than 2014-02-03 | Scott Oster | 40h | 40h |
| 20 | 4.2.5.4 | Support documentation on Wiki |  | 1d | 2014-02-04 A | 2014-02-04 A | 19 | 100% |  | 2014-02-04 | 2014-02-04 | 1d |  | start no earlier than 2014-01-28 | Stephen Langella | 8h | 8h |
| 21 | 4.2.5.5 | Grid Grouper |  | 10d | 2014-02-05 A | 2014-02-18 A | 18, 20 | 100% |  | 2014-02-05 | 2014-02-18 | 10d |  | finish no earlier than 2014-02-10 | Stephen Langella | 80h | 80h |
| 22 | 4.2.5.6 | Credential Delegation Service (CDS) |  | 5d | 2014-02-19 A | 2014-02-25 A | 21 | 100% |  | 2014-02-19 | 2014-02-25 | 5d |  |  | Scott Oster | 40h | 40h |
| 23 | 4.3 | **Deployment** |  | 223d | 2013-10-18 A | 2014-08-26 |  | 95% | 10.98d | 2013-10-18 | 2014-08-26 | 223d | 77d |  |  | 1508h | 1091.2h |
| 24 | 4.3.1 | Architecture Review Checklist |  | 4.75d | 2013-10-28 A | 2013-11-01 A | 10 | 100% |  | 2013-10-28 | 2013-11-01 | 4.75d |  |  | TideCube | 38h | 38h |
| 25 | 4.3.2 | Deployment to NCI QA |  | 19.75d | 2013-10-21 A | 2013-11-15 A | 10 | 100% |  | 2013-10-21 | 2013-11-15 | 19.75d |  |  | NCI Systems | 158h | 158h |
| 26 | 4.3.3 | Supporting QA Team |  | 70d | 2013-10-28 A | 2014-01-31 A |  | 100% |  | 2013-10-28 | 2014-01-31 | 70d |  | start no earlier than 2013-10-28 |  |  |  |

Notes:
- 11: https://cagrid.org/display/caGrid20/Home

| ID | WBS | Task | Type | Duration | Start | Finish | Predecessors | Complete | Remaining | Baseline start | Baseline finish | Baseline duration | Total slack | Free slack | Constraint | Resources | Work | Actual work |
| --- | --- | --- | --- | --- | --- | --- | --- | --- | --- | --- | --- | --- | --- | --- | --- | --- | --- | --- |
| 27 | 4.3.4 | **QA Testing** |  | 43d | 2014-01-02 A | 2014-03-03 | 25 | 99% | 0d | 2014-01-02 | 2014-03-03 | 43d | 0d |  |  | NCI Quality Assurance | 384h | 56h |
| 28 | 4.3.4.1 | **Iteration 1** |  | 5d | 2014-01-02 A | 2014-01-08 A |  | 100% |  | 2014-01-02 | 2014-01-08 | 5d |  |  |  |  | 40h | 40h |
| 29 | 4.3.4.1.1 | QA App Scan |  | 5d | 2014-01-02 A | 2014-01-08 A |  | 100% |  | 2014-01-02 | 2014-01-08 | 5d |  |  | start no earlier than 2014-01-02 | NCI Systems | 40h | 40h |
| 30 | 4.3.4.2 | Iteration 2 |  | 5d | 2014-02-25 A | 2014-03-03 A | 28 | 100% |  | 2014-02-25 | 2014-03-03 | 5d |  |  | start no earlier than 2014-01-20 |  |  |  |
| 31 | 4.3.5 | **Training Grid** |  | 8d | 2013-10-18 A | 2013-10-29 A |  | 100% |  | 2013-10-18 | 2013-10-29 | 8d |  |  |  |  | 56h | 56h |
| 32 | 4.3.5.1 | **Iteration 1** |  | 8d | 2013-10-18 A | 2013-10-29 A |  | 100% |  | 2013-10-18 | 2013-10-29 | 8d |  |  |  |  | 56h | 56h |
| 33 | 4.3.5.1.1 | Start | milestone | 0d | 2013-10-18 A | 2013-10-18 A | 28 | 100% |  | 2013-10-18 | 2013-10-18 | 0d |  |  |  |  |  |  |
| 34 | 4.3.5.1.2 | Dorian |  | 1d | 2013-10-21 A | 2013-10-21 A | 33 | 100% |  | 2013-10-21 | 2013-10-21 | 1d |  |  |  | Lantern Three Software Architect | 8h | 8h |
| 35 | 4.3.5.1.3 | Master GTS |  | 1d | 2013-10-22 A | 2013-10-22 A | 33 | 100% |  | 2013-10-22 | 2013-10-22 | 1d |  |  |  | Lantern Three Software Architect | 8h | 8h |
| 36 | 4.3.5.1.4 | Slave GTS |  | 1d | 2013-10-23 A | 2013-10-23 A | 33 | 100% |  | 2013-10-23 | 2013-10-23 | 1d |  |  |  | Lantern Three Software Architect | 8h | 8h |
| 37 | 4.3.5.1.5 | Index |  | 1d | 2013-10-24 A | 2013-10-24 A | 33 | 100% |  | 2013-10-24 | 2013-10-24 | 1d |  |  |  | Lantern Three Software Architect | 8h | 8h |
| 38 | 4.3.5.1.6 | Grid Grouper |  | 1d | 2013-10-25 A | 2013-10-25 A | 33 | 100% |  | 2013-10-25 | 2013-10-25 | 1d |  |  |  | Lantern Three Software Architect | 8h | 8h |
| 39 | 4.3.5.1.7 | MMS |  | 1d | 2013-10-28 A | 2013-10-28 A | 33 | 100% |  | 2013-10-28 | 2013-10-28 | 1d |  |  |  | Lantern Three Software Architect | 8h | 8h |
| 40 | 4.3.5.1.8 | GME |  | 1d | 2013-10-29 A | 2013-10-29 A | 33 | 100% |  | 2013-10-29 | 2013-10-29 | 1d |  |  |  | Lantern Three Software Architect | 8h | 8h |
| 41 | 4.3.5.1.9 | End | milestone | 0d | 2013-10-29 A | 2013-10-29 A | 36, 37, 38, 34, 39, 35, 40 | 100% |  | 2013-10-29 | 2013-10-29 | 0d |  |  |  | Lantern Three Software Architect |  |  |
| 42 | 4.3.6 | QA report for stage deployment |  | 4d | 2014-03-04 A | 2014-03-07 A | 30 | 100% |  | 2014-03-04 | 2014-03-07 | 4d |  |  | finish no earlier than 2014-02-07 |  |  |  |
| 43 | 4.3.7 | Review QA Report for Approval |  | 63d | 2014-04-02 A | 2014-06-27 A | 42 | 100% |  | 2014-04-02 | 2014-06-27 | 63d |  |  |  | Ian Fore | 504h | 504h |
| 44 | 4.3.8 | Deployment to NCI Stage |  | 18d | 2014-07-07 A | 2014-07-30 A | 43 | 100% |  | 2014-07-07 | 2014-07-30 | 18d |  |  |  | NCI Systems | 144h | 144h |
| 45 | 4.3.9 | Smoke testing |  | 2d | 2014-07-31 A | 2014-08-01 A | 44 | 100% |  | 2014-07-31 | 2014-08-01 | 2d |  |  | start no earlier than 2014-07-31 | QA | 16h | 16h |
| 46 | 4.3.10 | Stage App Scan |  | 5d | 2014-08-04 A | 2014-08-08 A | 45 | 100% |  | 2014-08-04 | 2014-08-08 | 5d |  |  | start no earlier than 2014-08-04 | Security Team | 40h | 40h |
| 47 | 4.3.11 | QA report for production deployment |  | 6d | 2014-08-11 | 2014-08-18 | 46 |  |  | 2014-08-11 | 2014-08-18 | 6d | 77.95d | 0d | finish no earlier than 2014-02-07 | QA | 48h |  |
| 48 | 4.3.12 | Deployment to NCI Production |  | 5d | 2014-08-19 | 2014-08-25 | 47 |  |  | 2014-08-19 | 2014-08-25 | 5d | 77.95d | 0d |  | NCI Systems | 40h |  |
| 49 | 4.3.13 | Deployment Support |  | 5d | 2014-03-26 A | 2014-08-26 | 48 | 99% | 0.05d | 2014-03-26 | 2014-08-26 | 5d | 77d |  | finish no earlier than 2014-08-26 | Stephen Langella; Scott Oster | 80h | 79.2h |
| 50 | 4.3.14 | Jenkins setup |  | 5d | 2014-02-21 A | 2014-02-27 A |  | 100% |  | 2014-02-21 | 2014-02-27 | 5d |  |  | start no earlier than 2014-02-21 |  |  |  |
| 51 | 4.4 | End | milestone | 0h | 2014-08-25 | 2014-08-25 | 25, 48, 24, 27 |  |  | 2014-08-25 | 2014-08-25 | 0h | 78d |  | start no earlier than 2014-02-20 |  |  |  |

Notes:
- 29: https://tracker.nci.nih.gov/browse/SECURITYTEAM-222

| ID | WBS | Task | Type | Duration | Start | Finish | Predecessors | Complete | Remaining | Baseline start | Baseline finish | Baseline duration | Total slack | Free slack | Constraint | Resources | Work | Actual work |
| --- | --- | --- | --- | --- | --- | --- | --- | --- | --- | --- | --- | --- | --- | --- | --- | --- | --- | --- |
| 52 | 5 | **caGrid 2.1** |  | 240d | 2013-12-30 A | 2014-11-28 |  | 55% | 108.04d | 2013-12-30 | 2014-11-28 | 240d | 9d |  |  |  | 7885.31h | 3668.16h |
| 53 | 5.1 | Start | milestone | 0h | 2013-12-30 A | 2013-12-30 A |  | 100% |  | 2013-12-30 | 2013-12-30 | 0h |  |  |  |  |  |  |
| 54 | 5.2 | **Service Development** |  | 185d | 2013-12-30 A | 2014-09-12 |  | 97% | 5.62d | 2013-12-30 | 2014-09-12 | 185d | 50d |  |  |  | 2208.4h | 2071.84h |
| 55 | 5.2.1 | Start | milestone | 0h | 2013-12-30 A | 2013-12-30 A | 53 | 100% |  | 2013-12-30 | 2013-12-30 | 0h |  |  |  |  |  |  |
| 56 | 5.2.2 | SyncGTS |  | 13.2w | 2013-12-30 A | 2014-03-31 A | 55 | 100% |  | 2013-12-30 | 2014-03-31 | 13.2w |  |  | finish no earlier than 2014-03-31 | Stephen Langella | 84h | 84h |
| 57 | 5.2.3 | MMS Service |  | 12.8w | 2014-01-01 A | 2014-03-31 A |  | 100% |  | 2014-01-01 | 2014-03-31 | 12.8w |  |  | finish no earlier than 2014-03-31 | Shannon Hastings | 512h | 512h |
| 58 | 5.2.4 | Index Service |  | 18.8w | 2014-03-24 A | 2014-07-31 A |  | 100% |  | 2014-03-24 | 2014-07-31 | 18.8w |  |  | finish no earlier than 2014-07-31 | Scott Oster | 752h | 752h |
| 59 | 5.2.5 | Authentication Service |  | 11.38w | 2014-04-30 A | 2014-09-12 |  | 85% | 1.71w | 2014-04-30 | 2014-09-12 | 11.38w | 50d | 0d | finish no earlier than 2014-09-12 | Prasad Konka; Scott Oster | 860.4h | 723.84h |
| 60 | 5.2.6 | End | milestone | 0h | 2014-09-12 | 2014-09-12 | 59, 57, 56, 58 |  |  | 2014-09-12 | 2014-09-12 | 0h | 50d | 0d | start no earlier than 2014-08-01 |  |  |  |
| 61 | 5.3 | **Cookbooks** |  | 200d | 2014-02-24 A | 2014-11-28 |  | 13% | 173.68d | 2014-02-24 | 2014-11-28 | 200d | 9d |  |  |  | 528h |  |
| 62 | 5.3.1 | Define cookbook scope |  | 10d | 2014-02-24 A | 2014-03-07 A |  | 100% |  | 2014-02-24 | 2014-03-07 | 10d |  |  | start no earlier than 2014-02-24 |  |  |  |
| 63 | 5.3.2 | How to upgrade caGrid 1.4 analytical service to caGrid 2.X analytical service |  | 66d | 2014-08-29 | 2014-11-28 |  |  |  | 2014-08-29 | 2014-11-28 | 66d | 9d |  | finish no earlier than 2014-11-28 | Prasad Konka | 528h |  |
| 64 | 5.4 | **Documentation** |  | 155d | 2014-03-10 A | 2014-10-10 |  | 41% | 92.07d | 2014-03-10 | 2014-10-10 | 155d | 44d |  |  |  | 4128.91h | 1517.12h |
| 65 | 5.4.1 | Requirements Document |  | 60d | 2014-03-10 A | 2014-05-30 A |  | 100% |  | 2014-03-10 | 2014-05-30 | 60d |  |  | start no earlier than 2014-03-10 | Stephen Langella | 480h | 480h |
| 66 | 5.4.2 | Review requirements |  | 5d | 2014-03-17 A | 2014-03-21 A | 65 | 100% |  | 2014-03-17 | 2014-03-21 | 5d |  |  |  | Ian Fore | 40h | 40h |
| 67 | 5.4.3 | caGrid 1.x to 2.x Implementation guide |  | 5d | 2014-09-22 | 2014-09-26 | 128 |  |  | 2014-09-22 | 2014-09-26 | 5d | 54d |  |  | Scott Oster | 40h |  |
| 68 | 5.4.4 | **Upgrade Guide** |  | 119d | 2014-04-01 A | 2014-09-12 |  | 30% | 83.84d | 2014-04-01 | 2014-09-12 | 119d | -10d | 0d |  | Scott Oster; Shannon Hastings; Stephen Langella | 3000.91h | 989.12h |
| 69 | 5.4.4.1 | Dorian |  | 8d | 2014-06-03 A | 2014-06-12 A |  | 100% |  | 2014-06-03 | 2014-06-12 | 8d |  |  | start no earlier than 2014-06-16 | Stephen Langella | 64h | 64h |
| 70 | 5.4.4.2 | Grid Trust Service (GTS) |  | 10d | 2014-06-16 A | 2014-06-27 A |  | 100% |  | 2014-06-16 | 2014-06-27 | 10d |  |  | finish no earlier than 2014-06-27 | Stephen Langella | 80h | 80h |
| 71 | 5.4.4.3 | Grid Grouper |  | 10d | 2014-07-14 A | 2014-07-25 A | 70 | 100% |  | 2014-07-14 | 2014-07-25 | 10d |  |  | finish no earlier than 2014-07-25 | Stephen Langella | 80h | 80h |
| 72 | 5.4.4.4 | Credential Delegation Service (CDS) |  | 15d | 2014-06-30 A | 2014-07-18 A | 56 | 100% |  | 2014-06-30 | 2014-07-18 | 15d |  |  | finish no earlier than 2014-07-18 | Scott Oster | 114h | 114h |
| 73 | 5.4.4.5 | Authentication Service |  | 10d | 2014-09-01 | 2014-09-12 | 59SS |  |  | 2014-09-01 | 2014-09-12 | 10d | -39.79d | 0d | finish no earlier than 2014-09-12 | Prasad Konka; Scott Oster | 160h |  |
| 74 | 5.4.4.6 | Global Model Exchange (GME) |  | 4d | 2014-07-21 A | 2014-07-25 A |  | 100% |  | 2014-07-21 | 2014-07-25 | 4d |  |  | finish no earlier than 2014-07-25 | Scott Oster | 28.8h | 28.8h |
| 75 | 5.4.4.7 | Index service |  | 10d | 2014-08-01 A | 2014-08-21 | 58 | 50% | 5d | 2014-08-01 | 2014-08-14 | 10d | -23.79d | 0d | start no earlier than 2014-08-01 | Scott Oster | 80h | 40h |
| 76 | 5.4.4.8 | MMS Service | manual | 109d | 2014-04-01 | 2014-08-29 | 57 |  |  | 2014-04-01 | 2014-08-29 | 109d |  |  | start no earlier than 2014-04-01 | Shannon Hastings | 834.11h |  |

Notes:
- 64: https://cagrid.org/display/caGrid20/Home

| ID | WBS | Task | Type | Duration | Start | Finish | Predecessors | Complete | Remaining | Baseline start | Baseline finish | Baseline duration | Total slack | Free slack | Constraint | Resources | Work | Actual work |
| --- | --- | --- | --- | --- | --- | --- | --- | --- | --- | --- | --- | --- | --- | --- | --- | --- | --- | --- |
| 77 | 5.4.5 | **Developer Guides** |  | 14d | 2014-09-15 | 2014-10-02 |  |  |  | 2014-09-15 | 2014-10-02 | 14d | 50d |  |  |  | 112h |  |
| 78 | 5.4.5.1 | Authentication Service |  | 14d | 2014-09-15 | 2014-10-02 | 60 |  |  | 2014-09-15 | 2014-10-02 | 14d | 50d |  | start no earlier than 2014-08-01 | Prasad Konka | 112h |  |
| 79 | 5.4.6 | **Administrator Guides** |  | 139d | 2014-04-01 A | 2014-10-10 | 68 | 25% | 103.79d | 2014-04-01 | 2014-10-10 | 139d | 44d |  |  |  | 456h | 8h |
| 80 | 5.4.6.1 | Dorian |  | 10d | 2014-09-15 | 2014-09-26 |  |  |  | 2014-09-15 | 2014-09-26 | 10d | 54d |  | finish no earlier than 2014-08-04 | Stephen Langella | 80h |  |
| 81 | 5.4.6.2 | Grid Trust Service (GTS) |  | 11d | 2014-09-15 | 2014-09-29 |  |  |  | 2014-09-15 | 2014-09-29 | 11d | 48d | 0d | finish no earlier than 2014-08-18 | Stephen Langella | 88h |  |
| 82 | 5.4.6.3 | Grid Grouper |  | 5d | 2014-09-30 | 2014-10-06 | 81 |  |  | 2014-09-30 | 2014-10-06 | 5d | 48d |  | start no earlier than 2014-08-19 | Stephen Langella | 40h |  |
| 83 | 5.4.6.4 | Credential Delegation Service (CDS) |  | 5d | 2014-09-15 | 2014-09-19 |  |  |  | 2014-09-15 | 2014-09-19 | 5d | 44d | 0d | finish no earlier than 2014-07-28 | Scott Oster | 40h |  |
| 84 | 5.4.6.5 | Global Model Exchange (GME) |  | 5d | 2014-09-22 | 2014-09-26 | 83 |  |  | 2014-09-22 | 2014-09-26 | 5d | 44d | 0d | finish no earlier than 2014-08-04 | Scott Oster | 40h |  |
| 85 | 5.4.6.6 | Index Service |  | 10d | 2014-09-29 | 2014-10-10 | 84 |  |  | 2014-09-29 | 2014-10-10 | 10d | 44d |  | start no earlier than 2014-08-05 | Scott Oster | 80h |  |
| 86 | 5.4.6.7 | Authentication Service |  | 10d | 2014-09-15 | 2014-09-26 |  |  |  | 2014-09-15 | 2014-09-26 | 10d | 54d |  | finish no earlier than 2014-08-04 | Prasad Konka | 80h |  |
| 87 | 5.4.6.8 | MMS Service | manual | 19d | 2014-04-01 A | 2014-04-25 A | 57 | 100% |  | 2014-04-01 | 2014-04-25 | 19d |  |  | finish no earlier than 2014-04-25 | Shannon Hastings | 8h | 8h |
| 88 | 5.5 | **Deployment** |  | 95.1d | 2014-07-14 A | 2014-11-24 |  | 12% | 84.15d | 2014-07-14 | 2014-11-17 | 91d | 13.9d |  |  |  | 1020h | 79.2h |
| 89 | 5.5.1 | Architecture Review Checklist |  | 4d | 2014-09-15 | 2014-09-18 | 68 |  |  | 2014-09-15 | 2014-09-18 | 4d | 60d |  |  | Prasad Konka | 32h |  |
| 90 | 5.5.2 | Supporting QA Team |  | 2w | 2014-09-15 | 2014-09-26 | 68 |  |  | 2014-09-15 | 2014-09-26 | 2w | 54d |  |  | Stephen Langella; Scott Oster; Shannon Hastings | 240h |  |
| 91 | 5.5.3 | **QA Testing** |  | 63.1d | 2014-07-14 A | 2014-10-09 |  | 25% | 47.48d | 2014-07-14 | 2014-10-02 | 59d | 13.9d |  |  |  | 320h | 79.2h |
| 92 | 5.5.3.1 | QA Test Documentation (Plan, RTM etc) |  | 11d | 2014-07-14 A | 2014-08-29 | 66 | 90% | 1.1d | 2014-07-14 | 2014-08-22 | 11d | 13.9d | 0d | finish no earlier than 2014-07-28 | QA | 88h | 79.2h |
| 93 | 5.5.3.2 | Milestone 1: QA 2.1 GTS and Dorian service in new tech stack |  | 10d | 2014-08-29 | 2014-09-12 | 69, 70, 92 |  |  | 2014-08-22 | 2014-09-05 | 10d | 13.9d | 0d | start no earlier than 2014-08-11 | QA | 80h |  |
| 94 | 5.5.3.3 | Milestone 2: QA 2.1 CDS and Grid Grouper service in new tech stack |  | 4d | 2014-09-12 | 2014-09-18 | 71, 72, 92, 93 |  |  | 2014-09-05 | 2014-09-12 | 5d | 13.9d | 0d |  | QA | 32h |  |
| 95 | 5.5.3.4 | Milestone 3: QA 2.1 Authentication/GME/MMS/Index services in new tech stack |  | 6d | 2014-09-18 | 2014-09-26 | 74, 75, 76, 92, 93, 73, 94 |  |  | 2014-09-15 | 2014-09-19 | 5d | 13.9d | 0d |  | QA | 48h |  |
| 96 | 5.5.3.5 | Milestone 4: Integration Testing |  | 5d | 2014-09-26 | 2014-10-03 | 95 |  |  | 2014-09-22 | 2014-09-26 | 5d | 13.9d | 0d |  | QA | 40h |  |
| 97 | 5.5.3.6 | QA AppScan for all 2.1 services |  | 4d | 2014-10-03 | 2014-10-09 | 96 |  |  | 2014-09-29 | 2014-10-02 | 4d | 13.9d | 0d |  | Security Team | 32h |  |
| 98 | 5.5.4 | **Training Grid** |  | 7d | 2014-10-09 | 2014-10-20 |  |  |  | 2014-10-02 | 2014-10-13 | 7d | 13.9d |  |  |  | 228h |  |
| 99 | 5.5.4.1 | **Iteration 1** |  | 7d | 2014-10-09 | 2014-10-20 |  |  |  | 2014-10-02 | 2014-10-13 | 7d | 13.9d |  |  |  | 228h |  |
| 100 | 5.5.4.1.1 | Start | milestone | 0d | 2014-10-09 | 2014-10-09 | 97 |  |  | 2014-10-02 | 2014-10-02 | 0d | 13.9d | 0d |  |  | 60h |  |
| 101 | 5.5.4.1.2 | Dorian |  | 1d | 2014-10-09 | 2014-10-10 | 100 |  |  | 2014-10-03 | 2014-10-03 | 1d | 13.9d | 0d |  | Stephen Langella; Scott Oster; Shannon Hastings | 24h |  |
| 102 | 5.5.4.1.3 | Master GTS |  | 1d | 2014-10-10 | 2014-10-13 | 101 |  |  | 2014-10-06 | 2014-10-06 | 1d | 13.9d | 0d |  | Stephen Langella; Scott Oster; Shannon Hastings | 24h |  |
| 103 | 5.5.4.1.4 | Slave GTS |  | 1d | 2014-10-13 | 2014-10-14 | 102 |  |  | 2014-10-07 | 2014-10-07 | 1d | 13.9d | 0d |  | Stephen Langella; Scott Oster; Shannon Hastings | 24h |  |
| 104 | 5.5.4.1.5 | Index |  | 1d | 2014-10-14 | 2014-10-15 | 103 |  |  | 2014-10-08 | 2014-10-08 | 1d | 13.9d | 0d |  | Stephen Langella; Scott Oster; Shannon Hastings | 24h |  |
| 105 | 5.5.4.1.6 | Grid Grouper |  | 1d | 2014-10-15 | 2014-10-16 | 104 |  |  | 2014-10-09 | 2014-10-09 | 1d | 13.9d | 0d |  | Stephen Langella; Scott Oster; Shannon Hastings | 24h |  |
| 106 | 5.5.4.1.7 | MMS |  | 1d | 2014-10-16 | 2014-10-17 | 105 |  |  | 2014-10-10 | 2014-10-10 | 1d | 13.9d | 0d |  | Stephen Langella; Scott Oster; Shannon Hastings | 24h |  |
| 107 | 5.5.4.1.8 | GME |  | 1d | 2014-10-17 | 2014-10-20 | 106 |  |  | 2014-10-13 | 2014-10-13 | 1d | 13.9d | 0d |  | Stephen Langella; Scott Oster; Shannon Hastings | 24h |  |
| 108 | 5.5.4.1.9 | End | milestone | 0d | 2014-10-20 | 2014-10-20 | 100, 101, 102, 103, 104, 105, 106, 107 |  |  | 2014-10-13 | 2014-10-13 | 0d | 13.9d | 0d |  |  |  |  |
| 109 | 5.5.5 | Deployment to NCI Stage |  | 5d | 2014-10-20 | 2014-10-27 | 108 |  |  | 2014-10-14 | 2014-10-20 | 5d | 13.9d | 0d |  | System Team | 40h |  |
| 110 | 5.5.6 | Smoke testing |  | 2d | 2014-10-27 | 2014-10-29 | 109 |  |  | 2014-10-21 | 2014-10-22 | 2d | 13.9d | 0d |  | QA | 16h |  |
| 111 | 5.5.7 | Stage App Scan |  | 3d | 2014-10-29 | 2014-11-03 | 110 |  |  | 2014-10-23 | 2014-10-27 | 3d | 13.9d | 0d |  | Security Team | 24h |  |
| 112 | 5.5.8 | QA test report for production deployment |  | 5d | 2014-11-03 | 2014-11-10 | 111 |  |  | 2014-10-28 | 2014-11-03 | 5d | 13.9d | 0d |  |  |  |  |
| 113 | 5.5.9 | Deployment to NCI Production |  | 5d | 2014-11-10 | 2014-11-17 | 112 |  |  | 2014-11-04 | 2014-11-10 | 5d | 13.9d | 0d |  | System Team | 40h |  |
| 114 | 5.5.10 | Deployment Support |  | 5d | 2014-11-17 | 2014-11-24 | 113 |  |  | 2014-11-11 | 2014-11-17 | 5d | 13.9d |  | finish no earlier than 2014-07-02 | Stephen Langella; Scott Oster | 80h |  |
| 115 | 5.6 | Release Support |  | 1d | 2014-11-17 | 2014-11-18 | 113 |  |  | 2014-11-11 | 2014-11-11 | 1d | 17.9d | 0d |  |  |  |  |
| 116 | 5.7 | End | milestone | 0h | 2014-11-18 | 2014-11-18 | 115 |  |  | 2014-11-11 | 2014-11-11 | 0h | 17.9d |  |  |  |  |  |

| ID | WBS | Task | Type | Duration | Start | Finish | Predecessors | Baseline start | Baseline finish | Baseline duration | Total slack | Free slack | Constraint | Resources | Work |
| --- | --- | --- | --- | --- | --- | --- | --- | --- | --- | --- | --- | --- | --- | --- | --- |
| 117 | 6 | **CTRP PA/PO grid services upgrading** |  | 85d | 2014-08-15 | 2014-12-11 |  | 2014-08-08 | 2014-11-28 | 81d | 0d |  |  |  | 1344h |
| 118 | 6.1 | Start | milestone | 0h | 2014-08-25 | 2014-08-25 |  | 2014-08-25 | 2014-08-25 | 0h | 19d | 0d | start no earlier than 2014-08-25 |  |  |
| 119 | 6.2 | **Service Development** |  | 60d | 2014-08-25 | 2014-11-14 |  | 2014-08-25 | 2014-11-14 | 60d | 19d |  |  |  | 480h |
| 120 | 6.2.1 | Start | milestone | 0h | 2014-08-25 | 2014-08-25 | 118 | 2014-08-25 | 2014-08-25 | 0h | 19d | 0d |  |  |  |
| 121 | 6.2.2 | PA services |  | 6w | 2014-08-25 | 2014-10-03 | 120 | 2014-08-25 | 2014-10-03 | 6w | 19d | 0d | finish no earlier than 2014-10-03 | NEW | 240h |
| 122 | 6.2.3 | PO services |  | 6w | 2014-10-06 | 2014-11-14 | 121 | 2014-10-06 | 2014-11-14 | 6w | 19d | 0d | finish no earlier than 2014-03-31 | NEW | 240h |
| 123 | 6.2.4 | End | milestone | 0h | 2014-11-14 | 2014-11-14 | 121, 122 | 2014-11-14 | 2014-11-14 | 0h | 19d |  |  |  |  |
| 124 | 6.3 | **Documentation** |  | 40d | 2014-08-25 | 2014-10-17 |  | 2014-08-25 | 2014-10-06 | 31d | 0d |  |  |  | 360h |
| 125 | 6.3.1 | Requirements Document |  | 15d | 2014-08-25 | 2014-09-12 |  | 2014-08-25 | 2014-09-12 | 15d | 0d |  | finish no earlier than 2014-09-12 | Prasad | 120h |
| 126 | 6.3.2 | Review requirements |  | 5d | 2014-09-15 | 2014-09-19 | 125 | 2014-09-15 | 2014-09-19 | 5d | 0d |  |  | GS/GPM/TPM/GQR/QA | 40h |
| 127 | 6.3.3 | CTRP grid services upgrading QA test plan |  | 20d | 2014-09-22 | 2014-10-17 | 126 | 2014-09-22 | 2014-10-06 | 11d | 0d |  | start no earlier than 2014-09-22 | QA | 160h |
| 128 | 6.3.4 | CTRP PA/PO caGrid 1.4 to 2.1 Implementation guide |  | 5d | 2014-09-15 | 2014-09-19 | 125 | 2014-09-15 | 2014-09-19 | 5d | 54d | 0d |  | Scott Oster | 40h |
| 129 | 6.4 | **Deployment** |  | 59d | 2014-09-22 | 2014-12-11 |  | 2014-09-22 | 2014-11-28 | 50d | 0d |  |  |  | 504h |
| 130 | 6.4.1 | Architecture Review Checklist |  | 4d | 2014-09-22 | 2014-09-25 | 128 | 2014-09-22 | 2014-09-25 | 4d | 55d |  |  | Prasad Konka | 32h |
| 131 | 6.4.2 | Supporting QA Team |  | 2w | 2014-09-22 | 2014-10-03 | 126 | 2014-09-22 | 2014-10-03 | 2w | 49d |  |  | Scott Oster | 80h |
| 132 | 6.4.3 | **QA Testing** |  | 19d | 2014-10-20 | 2014-11-13 |  | 2014-10-07 | 2014-10-31 | 19d | 0d |  |  |  | 232h |
| 133 | 6.4.3.1 | CTRP PA services in caGrid 2.1 |  | 10d | 2014-10-20 | 2014-10-31 | 127 | 2014-10-07 | 2014-10-20 | 10d | 0d |  |  | QA | 80h |
| 134 | 6.4.3.2 | CTRP PO services in caGrid 2.1 |  | 10d | 2014-10-20 | 2014-10-31 | 127 | 2014-10-07 | 2014-10-20 | 10d | 0d |  |  | QA | 80h |
| 135 | 6.4.3.3 | Integration Testing |  | 5d | 2014-11-03 | 2014-11-07 | 133, 134 | 2014-10-21 | 2014-10-27 | 5d | 0d |  |  | QA | 40h |
| 136 | 6.4.3.4 | QA AppScan for all 2.1 services |  | 4d | 2014-11-10 | 2014-11-13 | 135 | 2014-10-28 | 2014-10-31 | 4d | 0d |  |  | Security Team | 32h |
| 137 | 6.4.4 | Deployment to NCI Stage |  | 5d | 2014-11-14 | 2014-11-20 | 136 | 2014-11-03 | 2014-11-07 | 5d | 0d |  |  | System Team | 40h |
| 138 | 6.4.5 | Smoke testing |  | 2d | 2014-11-21 | 2014-11-24 | 137 | 2014-11-10 | 2014-11-11 | 2d | 0d |  |  | QA | 16h |
| 139 | 6.4.6 | Stage App Scan |  | 3d | 2014-11-25 | 2014-11-27 | 138 | 2014-11-12 | 2014-11-14 | 3d | 0d |  |  | Security Team | 24h |
| 140 | 6.4.7 | Deployment to NCI Production |  | 5d | 2014-11-28 | 2014-12-04 | 139 | 2014-11-17 | 2014-11-21 | 5d | 0d |  |  | System Team | 40h |
| 141 | 6.4.8 | Deployment Support |  | 5d | 2014-12-05 | 2014-12-11 | 140 | 2014-11-24 | 2014-11-28 | 5d | 0d |  | finish no earlier than 2014-11-19 | Scott Oster | 40h |
| 142 | 6.5 | End | milestone | 0h | 2014-08-15 | 2014-08-15 |  | 2014-08-08 | 2014-08-08 | 0h | 85d |  | start no earlier than 2014-08-15 |  |  |
| 143 | 7 | End | milestone | 0d | 2014-11-20 | 2014-11-20 |  | 2014-11-20 | 2014-11-20 | 0d | 16d |  | start no earlier than 2014-11-20 |  |  |

Notes:
- 124: https://cagrid.org/display/caGrid20/Home
